# CTRP2-ProjectSchedule

Schedule from MS Project, 2011-08-10 to 2012-02-22, A marks actual dates.

## Calendars

- Standard: Mon-Fri 08:00-12:00, 13:00-17:00; Sat-Sun off.

## Resources

| Resource |
| --- |
| Bala |
| Smita |
| Nelli |
| Paula |
| Hugh |
| Steve Matyas |
| Todd |
| Steve L |
| Sohal |
| Harsha |
| Naveen |
| BDA Team |
| Systems Team |
| QA3 |
| QA4 |
| QA5 |
| Vrushali |
| Max |
| VCDE |
| Anu |
| rushali |
| CTEP |
| caXchange |
| C3PR |
| caAERS |
| PSC |
| LV |
| BDA |
| "C3PR |
| Documentation |
| caGrid |
| QA |
| BAM |
| Edmond |
| NCI |
| SAIC-F |
| Web Team |
| Bill Dyer |
| CCTS Team |
| John S |
| Patrick |
| Architects |
| Christo |
| John |
| Rhett |
| Nellie |
| Steve |
| Kalpesh |
| David L |
| Stevel L |
| Kumar C |
| Gia |
| Wendy |
| Raj |
| Steve M |
| Lauren |
| Systems |
| CTRO |
| Hannes |
| SMEs |
| Gisele |
| Joe |
| CTRP Dev team |
| CBIIT |
| All |
| Analysts |
| TBD |
| Charles |
| ESST |
| Developers |
| Lisa |
| Christophe |
| Krishna |
| QA1 |
| QA2 |
| David |
| Security |
| Arch |
| Tech Leads |
| Paula B |
| Kalpana |
| KK |
| Abe |
| Kim |
| Vijay |
| CAT |
| George |
| Larry |
| Michael O |
| Resource 1 |
| Resource 2 |
| Resource3 |
| Resource 4 |
| Resource 5 |
| Gisele S |
| Dianne R |
| HR |
| NA |
| SL |
| ScenPro |
| 5AM |
| TP |
| EM |
| KE |
| JM |
| DL |
| Paul |
| Michael |
| Eilis |
| Team |
| Dev team |
| Ram P |
| NIH 508 team |
| Bryan |
| Bill D |
| Quy |
| Andrew |
| Rashmi |

## Schedule

| ID | WBS | Task | Type | Duration | Start | Finish | Predecessors | Complete | Remaining | Total slack | Free slack | Constraint | Resources | Work | Actual work |
| --- | --- | --- | --- | --- | --- | --- | --- | --- | --- | --- | --- | --- | --- | --- | --- |
| 1 | 1 | **CAARRAY 2.x** |  | 141d? | 2011-08-10 A | 2012-02-22 |  | 22% | 110.08d? | 0d |  | start no earlier than 2011-08-03 |  | 720h | 12h |
| 2 | 1.1 | **2.4.1** |  | 30d | 2011-08-10 A | 2011-09-20 |  | 46% | 16.11d | 111d |  | start no earlier than 2011-08-10 |  | 720h | 12h |
| 3 | 1.1.1 | **2.4.1 RC6** |  | 10d | 2011-08-10 A | 2011-08-23 |  | 69% | 3.06d | 0d |  |  | Andrew; Quy; Rashmi | 240h |  |
| 4 | 1.1.1.1 | caArray Importer: Regression test on local tier |  | 10d | 2011-08-10 A | 2011-08-23 A |  | 100% |  |  |  |  |  |  |  |
| 5 | 1.1.1.2 | caArray Importer: Test import on local tier |  | 10d | 2011-08-10 A | 2011-08-23 A |  | 100% |  |  |  |  |  |  |  |
| 6 | 1.1.1.3 | API Partner Testing on STAGE |  | 10d | 2011-08-10 A | 2011-08-23 A |  | 100% |  |  |  |  |  |  |  |
| 7 | 1.1.1.4 | Section 508 compliance: Run scan and issue-manage. |  | 10d | 2011-08-10 A | 2011-08-23 A |  | 100% |  |  |  |  |  |  |  |
| 8 | 1.1.1.5 | Write Grid client to get expt and hyb counts for Ken Buetow |  | 10d | 2011-08-10 A | 2011-08-23 A |  | 100% |  |  |  |  |  |  |  |
| 9 | 1.1.1.6 | Write and test QTP automated script to load TCGA data |  | 10d | 2011-08-10 A | 2011-08-23 |  | 75% | 2.5d | 0d |  |  |  |  |  |
| 10 | 1.1.1.7 | Bug fix for ARRAY-2059 that is a blocker for the TCGA data load |  | 10d | 2011-08-10 A | 2011-08-23 |  | 50% | 5d | 0d |  |  |  |  |  |
| 11 | 1.1.1.8 | Section 508 compliance: Fix ARRAY-1911 to get 90% score |  | 10d | 2011-08-10 | 2011-08-23 |  |  |  | 0d |  |  |  |  |  |
| 12 | 1.1.1.9 | Test bug fixes on QA tier |  | 10d | 2011-08-10 | 2011-08-23 |  |  |  | 0d |  |  |  |  |  |
| 13 | 1.1.2 | **2.4.1 RC7** |  | 10d | 2011-08-24 A | 2011-09-06 | 3 |  | 10d | 111d | 0d |  | Andrew; Quy; Rashmi | 240h | 12h |
| 14 | 1.1.2.1 | Bug fixes for ARRAY-2053 and ARRAY-2055 |  | 10d | 2011-08-24 | 2011-09-06 |  |  |  | 111d |  |  |  |  |  |
| 15 | 1.1.2.2 | Test bug fixes on QA tier |  | 10d | 2011-08-24 | 2011-09-06 |  |  |  | 111d |  |  |  |  |  |
| 16 | 1.1.3 | **2.4.1 Deployment** |  | 10d | 2011-09-07 | 2011-09-20 | 13 |  |  | 111d |  |  | Rashmi; Andrew; Quy | 240h |  |
| 17 | 1.1.3.1 | Test bug fixes on STAGE |  | 5d | 2011-09-07 | 2011-09-13 |  |  |  | 116d |  |  |  |  |  |
| 18 | 1.1.3.2 | Regression testing on STAGE |  | 5d | 2011-09-07 | 2011-09-13 |  |  |  | 116d |  |  |  |  |  |
| 19 | 1.1.3.3 | Upload Release Artifacts |  | 5d | 2011-09-07 | 2011-09-13 |  |  |  | 116d |  |  |  |  |  |
| 20 | 1.1.3.4 | App Scan on STAGE |  | 5d | 2011-09-07 | 2011-09-13 |  |  |  | 111d | 0d |  |  |  |  |
| 21 | 1.1.3.5 | Deploy to PRODUCTION |  | 5d | 2011-09-14 | 2011-09-20 | 20 |  |  | 111d | 0d |  |  |  |  |
| 22 | 1.2 | RELEASE 2.4.1 | milestone | 0d | 2011-09-20 | 2011-09-20 | 21 |  |  | 111d |  |  |  |  |  |
| 23 | 1.3 | **2.5.0 (LOEs unknown)** |  | 130d | 2011-08-24 | 2012-02-21 | 3 |  |  | 0d |  |  |  |  |  |
| 24 | 1.3.1 | Jboss 5.1 / Java 6 upgrade |  | 5d | 2011-08-24 | 2011-08-30 |  |  |  | 0d |  |  |  |  |  |
| 25 | 1.3.2 | File system storage of raw files |  | 15d | 2011-08-31 | 2011-09-20 | 24 |  |  | 0d |  |  |  |  |  |
| 26 | 1.3.3 | Plug-in architecture |  | 10d | 2011-09-21 | 2011-10-04 | 25 |  |  | 0d |  |  |  |  |  |
| 27 | 1.3.4 | Fix CI test suite |  | 5d | 2011-10-05 | 2011-10-11 | 26 |  |  | 0d |  |  |  |  |  |
| 28 | 1.3.5 | Upgrade to Anthill Pro 3 |  | 5d | 2011-10-12 | 2011-10-18 | 27 |  |  | 0d |  |  |  |  |  |
| 29 | 1.3.6 | Resumable uploads/downloads |  | 20d | 2011-10-19 | 2011-11-15 | 28 |  |  | 0d |  |  |  |  |  |
| 30 | 1.3.7 | Store parsed data on file system |  | 20d | 2011-11-16 | 2011-12-13 | 29 |  |  | 0d |  |  |  |  |  |
| 31 | 1.3.8 | Split imports into multiple transactions |  | 20d | 2011-12-14 | 2012-01-10 | 30 |  |  | 0d |  |  |  |  |  |
| 32 | 1.3.9 | Optimize parsers |  | 20d | 2012-01-11 | 2012-02-07 | 31 |  |  | 0d |  |  |  |  |  |
| 33 | 1.3.10 | Get Section 508 compliance to 90% |  | 10d | 2012-02-08 | 2012-02-21 | 32 |  |  | 0d |  |  |  |  |  |

| ID | WBS | Task | Duration | Start | Finish | Predecessors | Total slack |
| --- | --- | --- | --- | --- | --- | --- | --- |
| 34 | 1.4 | **PRODUCT BACKLOG** | 1d? | 2012-02-22 | 2012-02-22 | 23 | 0d |
| 35 | 1.4.1 | **Maintenance and Bug Fixes** | 1d? | 2012-02-22 | 2012-02-22 |  | 0d |
| 36 | 1.4.1.1 | Collaborator Group Defect | 1d? | 2012-02-22 | 2012-02-22 |  | 0d |
| 37 | 1.4.1.2 | Expand unparsed file types | 1d? | 2012-02-22 | 2012-02-22 |  | 0d |
| 38 | 1.4.1.3 | MAGE-TAB v1.1 support | 1d? | 2012-02-22 | 2012-02-22 |  | 0d |
| 39 | 1.4.1.4 | Clean up duplicate terms | 1d? | 2012-02-22 | 2012-02-22 |  | 0d |
| 40 | 1.4.1.5 | Import verification to prevent unintentional biomaterial/term creation | 1d? | 2012-02-22 | 2012-02-22 |  | 0d |
| 41 | 1.4.1.6 | Prevent multiple hybs to 1 file association | 1d? | 2012-02-22 | 2012-02-22 |  | 0d |
| 42 | 1.4.1.7 | IE 8 UI bugs | 1d? | 2012-02-22 | 2012-02-22 |  | 0d |
| 43 | 1.4.1.8 | Fix SDRF export of multiple derived data file columns | 1d? | 2012-02-22 | 2012-02-22 |  | 0d |
| 44 | 1.4.1.9 | Fix LSIDs for unparsed array designs | 1d? | 2012-02-22 | 2012-02-22 |  | 0d |
| 45 | 1.4.2 | **Grid Security** | 1d? | 2012-02-22 | 2012-02-22 |  | 0d |
| 46 | 1.4.2.1 | ARRAY-1463 | 1d? | 2012-02-22 | 2012-02-22 |  | 0d |
| 47 | 1.4.2.2 | ARRAY-1928 | 1d? | 2012-02-22 | 2012-02-22 |  | 0d |
| 48 | 1.4.2.3 | ARRAY-1353 | 1d? | 2012-02-22 | 2012-02-22 |  | 0d |
| 49 | 1.4.2.4 | ARRAY-1462 | 1d? | 2012-02-22 | 2012-02-22 |  | 0d |
| 50 | 1.4.2.5 | ARRAY-1929 | 1d? | 2012-02-22 | 2012-02-22 |  | 0d |
| 51 | 1.4.2.6 | ARRAY-1472 | 1d? | 2012-02-22 | 2012-02-22 |  | 0d |
| 52 | 1.4.3 | **Single Sign-on** | 1d? | 2012-02-22 | 2012-02-22 |  | 0d |
| 53 | 1.4.3.1 | ARRAY-1930 | 1d? | 2012-02-22 | 2012-02-22 |  | 0d |
| 54 | 1.4.4 | **Audit Trail** | 1d? | 2012-02-22 | 2012-02-22 |  | 0d |
| 55 | 1.4.4.1 | ARRAY-1931 | 1d? | 2012-02-22 | 2012-02-22 |  | 0d |
| 56 | 1.4.4.2 | ARRAY-1933 | 1d? | 2012-02-22 | 2012-02-22 |  | 0d |
| 57 | 1.4.4.3 | ARRAY-1932 | 1d? | 2012-02-22 | 2012-02-22 |  | 0d |

| ID | WBS | Task | Duration | Start | Finish | Total slack |
| --- | --- | --- | --- | --- | --- | --- |
| 58 | 1.4.5 | **File-level permissions for role-based security** | 1d? | 2012-02-22 | 2012-02-22 | 0d |
| 59 | 1.4.5.1 | ARRAY-1938 | 1d? | 2012-02-22 | 2012-02-22 | 0d |
